# Cronograma_Eventos_v1

How a schedule from MS Project changed from version to version. A marks actual dates.

## Version 1 (saved 2014-09-01, file Cronograma_Eventos_v1.mpp)

Note of the change: Atualização do Cronograma

| ID | WBS | Task | Duration | Start | Finish | Predecessors | Total float | Constraint |
| --- | --- | --- | --- | --- | --- | --- | --- | --- |
| 1 | 1 | **Documentação** | 20d | 2014-08-21 | 2014-09-17 |  | 0d |  |
| 2 |  | Documento de arquitetura | 6d | 2014-08-25 | 2014-09-01 |  | 12d | start no earlier than 2014-08-25 |
| 3 |  | Documento de Requisitos | 6d | 2014-08-25 | 2014-09-01 |  | 0d | start no earlier than 2014-08-25 |
| 4 |  | Casos de uso | 4d | 2014-09-02 | 2014-09-05 | 3 | 0d |  |
| 5 |  | Diagrama de classe | 3d | 2014-09-08 | 2014-09-10 | 4 | 5d | start no earlier than 2014-08-11 |
| 6 |  | Diagrama de atividade | 4d | 2014-09-08 | 2014-09-11 | 4 | 0d |  |
| 7 |  | Diagrama de sequencia | 4d | 2014-09-12 | 2014-09-17 | 6 | 0d |  |
| 8 |  | Wireframe | 8d | 2014-08-21 | 2014-09-01 |  | 12d | start no earlier than 2014-08-21 |
| 10 | 2 | **Desenvolvimento** | 1d? | 2014-08-11 | 2014-08-12 |  | 26.62d |  |
| 11 | 2.1 | **Camada de interface** | 1d? | 2014-08-11 | 2014-08-12 |  | 26.62d |  |
| 12 |  | Desenvolvimento da proposta visual | 1d? | 2014-08-11 | 2014-08-12 |  | 26.62d |  |
| 13 |  | Desenvolvimento do template padrão | 1d? | 2014-08-11 | 2014-08-12 |  | 26.62d |  |
| 14 | 2.1.3 | **Desenvolvimento das telas** | 1d? | 2014-08-11 | 2014-08-12 |  | 26.62d |  |
| 15 |  | Pagina inicial | 1d? | 2014-08-11 | 2014-08-12 |  | 26.62d |  |
| 16 |  | Cadastro de usuarios | 1d? | 2014-08-11 | 2014-08-12 |  | 26.62d |  |
| 17 |  | Cadastro de eventos | 1d? | 2014-08-11 | 2014-08-12 |  | 26.62d |  |
| 18 |  | Cadastro de salas | 1d? | 2014-08-11 | 2014-08-12 |  | 26.62d |  |
| 19 | 2.2 | **Camada de negócios** | 1d? | 2014-08-11 | 2014-08-12 |  | 26.62d |  |
| 20 |  | Definição do modelo de desenvolvimento | 1d? | 2014-08-11 | 2014-08-12 |  | 26.62d |  |
| 21 | 2.2.2 | **Criação das classes** | 1d? | 2014-08-11 | 2014-08-12 |  | 26.62d |  |
| 22 |  | usuarios | 1d? | 2014-08-11 | 2014-08-12 |  | 26.62d |  |
| 23 |  | eventos | 1d? | 2014-08-11 | 2014-08-12 |  | 26.62d |  |
| 24 | 2.2.3 | **Telas** | 1d? | 2014-08-11 | 2014-08-12 |  | 26.62d |  |
| 25 |  | usuarios | 1d? | 2014-08-11 | 2014-08-12 |  | 26.62d |  |
| 26 |  | eventos | 1d? | 2014-08-11 | 2014-08-12 |  | 26.62d |  |
| 28 | 3 | **Banco de dados** | 1d? | 2014-08-11 | 2014-08-12 |  | 26.62d |  |
| 29 |  | Modelo lógico | 1d? | 2014-08-11 | 2014-08-12 |  | 26.62d |  |
| 30 |  | Modelo físico | 1d? | 2014-08-11 | 2014-08-12 |  | 26.62d |  |
| 31 |  | Dicionario de dados | 1d? | 2014-08-11 | 2014-08-12 |  | 26.62d |  |

## Version 2 (saved 2014-09-08, file Cronograma_Eventos_v1.mpp)

Note of the change: Atualização do Cronograma

Last finish 2014-09-17 → 2014-10-17 (+30d). Complete tasks 0 → 2.

Added:

| ID | Task | Duration | Start | Finish | Predecessors | Constraint | Resources |
| --- | --- | --- | --- | --- | --- | --- | --- |
| 1 | **Projeto Eventos** | 48.62d? | 2014-08-11 A | 2014-10-17 |  |  |  |
| 13 | Escolha do framework da camada de interface | 4d | 2014-08-11 A | 2014-08-15 A |  | finish no earlier than 2014-08-15 | Marco Aurélio |
| 15 | Treinamento da equipe no Bootstrap | 5d | 2014-09-08 | 2014-09-12 |  | start no earlier than 2014-09-08 | Mariana; Allan; Marco Aurélio; Denis |
| 18 | **Ambiente Gestor** | 1d? | 2014-08-11 | 2014-08-12 |  |  |  |
| 21 | Cadastro de atividades | 1d? | 2014-08-11 | 2014-08-12 |  |  |  |
| 23 | Relatórios | 1d? | 2014-08-11 | 2014-08-12 |  |  |  |
| 24 | Alteração de presença | 1d? | 2014-08-11 | 2014-08-12 |  |  |  |
| 27 | **Ambiente Usuário** | 29d | 2014-09-08 | 2014-10-17 |  |  |  |
| 28 | Tela inicial | 3d | 2014-10-07 | 2014-10-09 | 32 | start no earlier than 2014-09-22 | Mariana |
| 29 | Login | 2d | 2014-09-30 | 2014-10-01 | 36 | start no earlier than 2014-09-08 | Allan |
| 30 | Dados pessoais do usuário (consutar e alterar) | 3d | 2014-09-30 | 2014-10-02 | 36 | start no earlier than 2014-09-22 | Denis |
| 31 | Inscrições do usuário (agenda/certificado) | 10d | 2014-10-03 | 2014-10-17 | 30 | start no earlier than 2014-09-08 | Marco Aurélio; Allan |
| 32 | Cadastro de usuarios no site | 5d | 2014-09-30 | 2014-10-06 | 36 | start no earlier than 2014-09-08 | Mariana |
| 33 | Seleção de eventos | 6d | 2014-09-08 | 2014-09-15 |  | start no earlier than 2014-09-08 | Marco Aurélio; Allan |
| 34 | Evento selecionado | 5d | 2014-09-16 | 2014-09-22 | 33 | start no earlier than 2014-09-08 | Marco Aurélio; Allan |
| 35 | Inscrição atividade | 5d | 2014-09-23 | 2014-09-29 | 34 | start no earlier than 2014-09-08 | Mariana; Marco Aurélio |
| 36 | Atividade selecionada | 5d | 2014-09-23 | 2014-09-29 | 35FF | start no earlier than 2014-09-08 | Denis; Allan |
| 37 | Contato | 2d | 2014-09-15 | 2014-09-16 |  | start no earlier than 2014-09-15 | Denis |

Removed: 12 Desenvolvimento da proposta visual

Changed:

| ID | Task | Start | Finish | Duration | Complete | Total float | Predecessors | Other |
| --- | --- | --- | --- | --- | --- | --- | --- | --- |
| 2 | **Documentação** | 2014-08-21 A |  |  | 0% → 57% | 0d → 21d |  |  |
| 3 | Documento de arquitetura | 2014-08-25 A |  |  | 0% → 70% | 12d → 33d |  |  |
| 4 | Documento de Requisitos | 2014-08-25 A |  |  | 0% → 95% | 0d → 1.6d |  |  |
| 5 | Casos de uso | 2014-09-02 A |  |  | 0% → 40% | 0d → 0.3d |  |  |
| 6 | Diagrama de classe | 2014-09-08 A |  |  | 0% → 10% | 5d → 26d |  |  |
| 9 | Wireframe | 2014-08-21 A | 2014-09-01 A |  | 0% → 100% | 12d → none |  |  |
| 11 | **Desenvolvimento** | 2014-08-11 A | 2014-08-12 → 2014-10-17 (+66d) | 1d? → 48.62d? | 0% → 17% | 26.62d → 0d |  |  |
| 12 | **Camada de interface** | 2014-08-11 A | 2014-08-12 → 2014-10-17 (+66d) | 1d? → 48.62d? | 0% → 18% | 26.62d → 0d |  |  |
| 14 | Desenvolvimento do template padrão | 2014-08-11 → 2014-09-01 A (+21d) | 2014-08-12 → 2014-09-15 (+34d) | 1d? → 11d | 0% → 85% | 26.62d → 23d | none → 13 | resources none → Allan; Marco Aurélio |
| 16 | **Desenvolvimento das telas** |  | 2014-08-12 → 2014-10-17 (+66d) | 1d? → 48.62d? |  | 26.62d → 0d |  |  |

## Version 3 (saved 2014-09-15, file Cronograma_Eventos_v3.mpp)

Note of the change: Cronograma+bkp interface

Last finish stays 2014-10-17. Complete tasks 2 → 3.

Added:

| ID | Task | Duration | Start | Finish | Predecessors | Constraint |
| --- | --- | --- | --- | --- | --- | --- |
| 44 | endereço | 3d | 2014-09-18 | 2014-09-22 | 41 |  |
| 45 | grauinstrucao | 3d | 2014-09-18 | 2014-09-22 | 41 |  |
| 46 | perfil | 3d | 2014-09-18 | 2014-09-22 | 41 |  |
| 47 | administrador | 3d | 2014-09-18 | 2014-09-22 | 41 |  |
| 48 | gestor | 3d | 2014-09-18 | 2014-09-22 | 41 |  |
| 49 | recepcionista | 3d | 2014-09-18 | 2014-09-22 | 41 |  |
| 50 | evento | 3d | 2014-09-18 | 2014-09-22 | 41 |  |
| 51 | atividade | 3d | 2014-09-18 | 2014-09-22 | 41 |  |
| 52 | palestrante | 3d | 2014-09-18 | 2014-09-22 | 41 |  |
| 55 | endereço | 1d? | 2014-09-23 | 2014-09-23 |  | start no earlier than 2014-09-23 |
| 56 | grauinstrucao | 1d? | 2014-09-23 | 2014-09-23 |  | start no earlier than 2014-09-23 |
| 57 | perfil | 1d? | 2014-09-23 | 2014-09-23 |  | start no earlier than 2014-09-23 |
| 58 | administrador | 1d? | 2014-09-23 | 2014-09-23 |  | start no earlier than 2014-09-23 |
| 59 | gestor | 1d? | 2014-09-23 | 2014-09-23 |  | start no earlier than 2014-09-23 |
| 60 | recepcionista | 1d? | 2014-09-23 | 2014-09-23 |  | start no earlier than 2014-09-23 |
| 61 | evento | 1d? | 2014-09-23 | 2014-09-23 |  | start no earlier than 2014-09-23 |
| 62 | atividade | 1d? | 2014-09-23 | 2014-09-23 |  | start no earlier than 2014-09-23 |
| 63 | palestrante | 1d? | 2014-09-23 | 2014-09-23 |  | start no earlier than 2014-09-23 |

Removed: 44 eventos; 47 eventos

Changed:

| ID | Task | Start | Finish | Duration | Complete | Total float | Predecessors | Other |
| --- | --- | --- | --- | --- | --- | --- | --- | --- |
| 1 | **Projeto Eventos** |  |  |  | 29% → 28% |  |  |  |
| 11 | **Desenvolvimento** |  |  |  | 17% → 21% |  |  |  |
| 12 | **Camada de interface** |  |  |  | 18% → 33% |  |  |  |
| 15 | Treinamento da equipe no Bootstrap | 2014-09-08 A | 2014-09-12 A |  | 0% → 100% | 24d → none |  |  |
| 16 | **Desenvolvimento das telas** | 2014-08-11 A |  |  | 0% → 11% |  |  |  |
| 27 | **Ambiente Usuário** | 2014-09-08 A |  |  | 0% → 13% |  |  |  |
| 28 | Tela inicial | 2014-10-07 A |  |  | 0% → 60% |  |  |  |
| 33 | Seleção de eventos | 2014-09-08 A |  |  | 0% → 70% |  |  |  |
| 40 | **Camada de negócios** | 2014-08-11 → 2014-09-12 (+32d) | 2014-08-12 → 2014-09-23 (+42d) | 1d? → 8d? |  | 47.62d → 17d |  |  |
| 41 | Definição do modelo de desenvolvimento | 2014-08-11 → 2014-09-12 (+32d) | 2014-08-12 → 2014-09-17 (+36d) | 1d? → 4d |  | 47.62d → 18d |  | constraint none → start no earlier than 2014-09-12; resources none → Matheus,Marco Antonio |
| 42 | **Criação das classes** | 2014-08-11 → 2014-09-18 (+38d) | 2014-08-12 → 2014-09-22 (+41d) | 1d? → 3d |  | 47.62d → 18d |  |  |
| 43 | participante | 2014-08-11 → 2014-09-18 (+38d) | 2014-08-12 → 2014-09-22 (+41d) | 1d? → 3d |  | 47.62d → 18d | none → 41 | was named usuarios |
| 53 | **Regras de negócio (controler)** | 2014-08-11 → 2014-09-23 (+43d) | 2014-08-12 → 2014-09-23 (+42d) |  |  | 47.62d → 17d |  | was named Telas |
| 54 | participante | 2014-08-11 → 2014-09-23 (+43d) | 2014-08-12 → 2014-09-23 (+42d) |  |  | 47.62d → 17d |  | was named usuarios; constraint none → start no earlier than 2014-09-23 |

## Version 4 (saved 2014-09-29, file Cronograma_Eventos_v4.mpp)

Note of the change: Cronograma

Last finish 2014-10-17 → 2014-11-12 (+26d). Complete tasks 3 → 17.

Changed:

| ID | Task | Start | Finish | Duration | Complete | Total float | Predecessors | Other |
| --- | --- | --- | --- | --- | --- | --- | --- | --- |
| 1 | **Projeto Eventos** |  | 2014-10-17 → 2014-11-12 (+26d) | 48.62d? → 66.62d? | 28% → 49% |  |  |  |
| 2 | **Documentação** |  |  |  | 57% → 87% | 21d → 39d |  |  |
| 6 | Diagrama de classe |  | 2014-09-10 A |  | 10% → 100% | 26d → none |  |  |
| 7 | Diagrama de atividade | 2014-09-08 A | 2014-09-11 A |  | 0% → 100% | 21d → none |  |  |
| 8 | Diagrama de sequencia | 2014-09-12 A | 2014-09-17 A |  | 0% → 100% | 21d → none |  |  |
| 11 | **Desenvolvimento** |  | 2014-10-17 → 2014-11-12 (+26d) | 48.62d? → 66.62d? | 21% → 43% |  |  |  |
| 12 | **Camada de interface** |  | 2014-10-17 → 2014-11-12 (+26d) | 48.62d? → 66.62d? | 33% → 55% |  |  |  |
| 14 | Desenvolvimento do template padrão |  | 2014-09-15 A |  | 85% → 100% | 23d → none |  |  |
| 16 | **Desenvolvimento das telas** |  | 2014-10-17 → 2014-11-12 (+26d) | 48.62d? → 66.62d? | 11% → 41% |  |  |  |
| 17 | Pagina inicial | 2014-08-11 A |  |  | 0% → 30% | 47.62d → 65.62d |  |  |
| 18 | **Ambiente Gestor** | 2014-08-11 → 2014-10-20 (+70d) | 2014-08-12 → 2014-11-12 (+92d) | 1d? → 18d |  | 47.62d → 0d |  |  |
| 19 | Cadastro de usuarios | 2014-08-11 → 2014-10-20 (+70d) | 2014-08-12 → 2014-10-21 (+70d) | 1d? → 2d |  | 47.62d → 0d | none → 29 |  |
| 20 | Cadastro de eventos | 2014-08-11 → 2014-10-22 (+72d) | 2014-08-12 → 2014-10-23 (+72d) | 1d? → 2d |  | 47.62d → 0d | none → 19 |  |
| 21 | Cadastro de atividades | 2014-08-11 → 2014-10-24 (+74d) | 2014-08-12 → 2014-10-27 (+76d) | 1d? → 2d |  | 47.62d → 0d | none → 20 |  |
| 22 | Cadastro de salas | 2014-08-11 → 2014-10-28 (+78d) | 2014-08-12 → 2014-10-29 (+78d) | 1d? → 2d |  | 47.62d → 0d | none → 21 |  |
| 23 | Relatórios | 2014-08-11 → 2014-10-30 (+80d) | 2014-08-12 → 2014-11-10 (+90d) | 1d? → 8d |  | 47.62d → 0d | none → 22 |  |
| 24 | Alteração de presença | 2014-08-11 → 2014-11-11 (+92d) | 2014-08-12 → 2014-11-12 (+92d) | 1d? → 2d |  | 47.62d → 0d | none → 23 |  |
| 25 | **Ambiente Usuário** |  |  |  | 13% → 58% | 0d → 18d |  |  |
| 27 | Login | 2014-09-30 A |  |  | 0% → 80% | 11d → 29d |  |  |
| 28 | Dados pessoais do usuário (consutar e alterar) | 2014-09-30 A |  |  | 0% → 30% |  |  |  |
| 31 | Seleção de eventos |  |  |  | 70% → 99% | 0d → 4.95d |  |  |
| 32 | Evento selecionado | 2014-09-16 A |  |  | 0% → 99% | 0d → 4.95d |  |  |
| 33 | Inscrição atividade | 2014-09-23 A |  |  | 0% → 99% | 0d → 0.9d |  |  |
| 34 | Atividade selecionada | 2014-09-23 A |  |  | 0% → 90% | 0d → 0.9d |  |  |
| 35 | Contato | 2014-09-15 A |  |  | 0% → 95% | 22d → 40d |  |  |
| 36 | **Camada de negócios** | 2014-09-12 A | 2014-09-23 → 2014-10-06 (+13d) | 8d? → 17d? | 0% → 32% | 17d → 26d |  |  |
| 38 | **Criação das classes** | 2014-09-18 A | 2014-09-22 A |  | 0% → 100% | 18d → none |  |  |
| 39 | participante | 2014-09-18 A | 2014-09-22 A |  | 0% → 100% | 18d → none |  |  |
| 40 | endereço | 2014-09-18 A | 2014-09-22 A |  | 0% → 100% | 18d → none |  |  |
| 41 | grauinstrucao | 2014-09-18 A | 2014-09-22 A |  | 0% → 100% | 18d → none |  |  |
| 42 | perfil | 2014-09-18 A | 2014-09-22 A |  | 0% → 100% | 18d → none |  |  |
| 43 | administrador | 2014-09-18 A | 2014-09-22 A |  | 0% → 100% | 18d → none |  |  |
| 44 | gestor | 2014-09-18 A | 2014-09-22 A |  | 0% → 100% | 18d → none |  |  |
| 45 | recepcionista | 2014-09-18 A | 2014-09-22 A |  | 0% → 100% | 18d → none |  |  |
| 46 | evento | 2014-09-18 A | 2014-09-22 A |  | 0% → 100% | 18d → none |  |  |
| 47 | atividade | 2014-09-18 A | 2014-09-22 A |  | 0% → 100% | 18d → none |  |  |
| 48 | palestrante | 2014-09-18 A | 2014-09-22 A |  | 0% → 100% | 18d → none |  |  |
| 49 | **Regras de negócio (controler)** | 2014-09-23 → 2014-09-29 (+6d) | 2014-09-23 → 2014-10-06 (+13d) | 1d? → 6d? |  | 17d → 26d |  |  |
| 50 | participante | 2014-09-23 → 2014-09-29 (+6d) | 2014-09-23 → 2014-10-06 (+13d) | 1d? → 6d? |  | 17d → 26d |  | constraint start no earlier than 2014-09-23 → finish no earlier than 2014-10-06 |
| 51 | endereço | 2014-09-23 → 2014-09-29 (+6d) | 2014-09-23 → 2014-10-06 (+13d) | 1d? → 6d? |  | 17d → 26d |  | constraint start no earlier than 2014-09-23 → finish no earlier than 2014-10-06 |
| 52 | grauinstrucao | 2014-09-23 → 2014-09-29 (+6d) | 2014-09-23 → 2014-10-06 (+13d) | 1d? → 6d? |  | 17d → 26d |  | constraint start no earlier than 2014-09-23 → finish no earlier than 2014-10-06 |
| 53 | perfil | 2014-09-23 → 2014-09-29 (+6d) | 2014-09-23 → 2014-10-06 (+13d) | 1d? → 6d? |  | 17d → 26d |  | constraint start no earlier than 2014-09-23 → finish no earlier than 2014-10-06 |
| 54 | administrador | 2014-09-23 → 2014-09-29 (+6d) | 2014-09-23 → 2014-10-06 (+13d) | 1d? → 6d? |  | 17d → 26d |  | constraint start no earlier than 2014-09-23 → finish no earlier than 2014-10-06 |
| 55 | gestor | 2014-09-23 → 2014-09-29 (+6d) | 2014-09-23 → 2014-10-06 (+13d) | 1d? → 6d? |  | 17d → 26d |  | constraint start no earlier than 2014-09-23 → finish no earlier than 2014-10-06 |
| 56 | recepcionista | 2014-09-23 → 2014-09-29 (+6d) | 2014-09-23 → 2014-10-06 (+13d) | 1d? → 6d? |  | 17d → 26d |  | constraint start no earlier than 2014-09-23 → finish no earlier than 2014-10-06 |
| 57 | evento | 2014-09-23 → 2014-09-29 (+6d) | 2014-09-23 → 2014-10-06 (+13d) | 1d? → 6d? |  | 17d → 26d |  | constraint start no earlier than 2014-09-23 → finish no earlier than 2014-10-06 |
| 58 | atividade | 2014-09-23 → 2014-09-29 (+6d) | 2014-09-23 → 2014-10-06 (+13d) | 1d? → 6d? |  | 17d → 26d |  | constraint start no earlier than 2014-09-23 → finish no earlier than 2014-10-06 |
| 59 | palestrante | 2014-09-23 → 2014-09-29 (+6d) | 2014-09-23 → 2014-10-06 (+13d) | 1d? → 6d? |  | 17d → 26d |  | constraint start no earlier than 2014-09-23 → finish no earlier than 2014-10-06 |
